# ASN1 Verification

Schedule from Planner, 2019-07-15 to 2020-06-17.
Phase: Phase I

## Calendars

- Default: Mon-Fri 08:00-12:00, 13:00-17:00; Sat-Sun off.

## Resources

| Resource |
| --- |
| Eng1 |
| Eng2 |
| Eng3 |
| Intern1 |
| Intern2 |

## Schedule

| ID | WBS | Task | Type | Duration | Start | Finish | Predecessors | Resources | Work |
| --- | --- | --- | --- | --- | --- | --- | --- | --- | --- |
| 1 | 1 | **Important auxiliary functions** |  |  | 2019-07-15 | 2019-08-23 |  | Eng1; Eng2; Eng3 | 984h |
| 2 | 1.1 | **Ber decoder** |  |  | 2019-07-15 | 2019-08-23 |  |  | 792h |
| 3 | 1.1.1 | **Specs** |  |  | 2019-07-15 | 2019-07-23 |  |  | 304h |
| 4 | 1.1.1.1 | ber_check_tags |  |  | 2019-07-15 | 2019-07-17 |  | Eng1; Eng2; Eng3 | 56h |
| 5 | 1.1.1.2 | ber_fetch_tag |  |  | 2019-07-15 | 2019-07-23 |  |  | 56h |
| 6 | 1.1.1.3 | ber_fetch_length |  |  | 2019-07-15 | 2019-07-23 |  |  | 56h |
| 7 | 1.1.1.4 | ber_tlv_tag_string |  |  | 2019-07-15 | 2019-07-17 |  |  | 24h |
| 8 | 1.1.1.5 | ber_fetch_length |  |  | 2019-07-15 | 2019-07-23 |  |  | 56h |
| 9 | 1.1.1.6 | ber_tlv_tag_serialize |  |  | 2019-07-15 | 2019-07-23 |  |  | 56h |
| 10 | 1.1.2 | **Proofs** |  |  | 2019-07-15 | 2019-08-23 |  |  | 488h |
| 11 | 1.1.2.1 | ber_check_tags |  |  | 2019-07-15 | 2019-08-23 |  |  | 240h |
| 12 | 1.1.2.2 | ber_fetch_tag |  |  | 2019-07-15 | 2019-08-01 |  |  | 112h |
| 13 | 1.1.2.3 | ber_fetch_length |  |  | 2019-07-15 | 2019-07-23 |  |  | 56h |
| 14 | 1.1.2.4 | ber_tlv_tag_string |  |  | 2019-07-15 | 2019-07-17 |  |  | 24h |
| 15 | 1.1.2.5 | ber_fetch_length |  |  | 2019-07-15 | 2019-07-23 |  |  | 56h |
| 16 | 1.2 | **Der encoder** |  |  | 2019-07-15 | 2019-08-01 |  |  | 192h |
| 17 | 1.2.1 | **Specs** |  |  | 2019-07-15 | 2019-07-17 |  |  | 40h |
| 18 | 1.2.1.1 | der_write_tags |  |  | 2019-07-15 | 2019-07-17 |  |  | 24h |
| 19 | 1.2.1.2 | der_write_TL |  |  | 2019-07-15 | 2019-07-15 |  |  | 8h |
| 20 | 1.2.1.3 | der_tlv_length_serialize |  |  | 2019-07-15 | 2019-07-15 |  |  | 8h |
| 21 | 1.2.2 | **Proofs** |  |  | 2019-07-15 | 2019-08-01 |  |  | 152h |
| 22 | 1.2.2.1 | der_write_tags |  |  | 2019-07-15 | 2019-08-01 |  |  | 112h |
| 23 | 1.2.2.2 | der_write_TL |  |  | 2019-07-15 | 2019-07-16 |  |  | 16h |
| 24 | 1.2.2.3 | der_tlv_length_serialize |  |  | 2019-07-15 | 2019-07-17 |  |  | 24h |
| 25 | 2 | Milestone: ber_check_tag correctness | milestone | 0d | 2019-08-23 | 2019-08-23 | 1 |  |  |

| ID | WBS | Task | Type | Duration | Start | Finish | Predecessors | Resources | Work |
| --- | --- | --- | --- | --- | --- | --- | --- | --- | --- |
| 26 | 3 | **Boolean type** |  |  | 2019-07-24 | 2019-08-12 | 3 | Intern1; Intern2 | 128h |
| 27 | 3.1 | **Boolean decoder** |  |  | 2019-07-24 | 2019-08-01 |  | Intern1 [50%] | 64h |
| 28 | 3.1.1 | BOOLEAN_compare |  |  | 2019-07-24 | 2019-07-24 |  |  | 8h |
| 29 | 3.1.2 | BOOLEAN_decode_ber |  |  | 2019-07-24 | 2019-08-01 |  |  | 56h |
| 30 | 3.2 | **Boolean encoder** |  |  | 2019-07-24 | 2019-07-24 |  | Intern2 [50%] | 8h |
| 31 | 3.2.1 | BOOLEAN_encode_der |  |  | 2019-07-24 | 2019-07-24 |  |  | 8h |
| 32 | 3.3 | Roundtrip correctness Boolean |  |  | 2019-08-02 | 2019-08-12 | 30, 27 |  | 56h |
| 33 | 4 | Milestone: Boolean encoder/decoder correctness | milestone | 0d | 2019-08-12 | 2019-08-12 | 3, 26 |  |  |
| 34 | 5 | **Refactoring and revisions** |  |  | 2019-08-13 | 2019-08-21 | 33 | Eng1; Eng2; Eng3 | 184h |
| 35 | 5.1 | Formulating high-level properties |  |  | 2019-08-13 | 2019-08-21 |  |  | 56h |
| 36 | 5.2 | New complexity estimates |  |  | 2019-08-13 | 2019-08-14 |  |  | 16h |
| 37 | 5.3 | Proof automation |  |  | 2019-08-13 | 2019-08-15 | 4 | Eng1; Eng2; Eng3 | 56h |
| 38 | 5.4 | Refactoring C code |  |  | 2019-08-13 | 2019-08-21 | 4 | Eng3 | 56h |
| 39 | 6 | Milestone: Proof automation library | milestone | 0d | 2019-08-21 | 2019-08-21 | 34 |  |  |
| 40 | 7 | Milestone: New planning | milestone | 0d | 2019-08-14 | 2019-08-14 | 36 |  |  |
| 41 | 8 | **Primitive type** |  |  | 2019-07-25 | 2019-08-13 | 3 | Intern1; Intern2 | 168h |
| 42 | 8.1 | **Primitive encoder** |  |  | 2019-07-25 | 2019-08-13 | 30 | Intern1; Intern2 | 112h |
| 43 | 8.1.1 | der_encode_primitive |  |  | 2019-07-25 | 2019-08-02 |  |  | 56h |
| 44 | 8.1.2 | der_write_tag |  |  | 2019-08-05 | 2019-08-13 | 43 |  | 56h |
| 45 | 8.2 | **Primitive decoder** |  |  | 2019-08-02 | 2019-08-12 | 27 | Intern1; Intern2 | 56h |
| 46 | 8.2.1 | ber_decode_primitive |  |  | 2019-08-02 | 2019-08-12 |  |  | 56h |
| 47 | 9 | **Native Integer type** |  |  | 2019-08-14 | 2019-09-13 | 41 | Eng1; Eng2; Eng3 | 296h |
| 48 | 9.1 | **Native Integer decoder** |  |  | 2019-08-14 | 2019-08-20 | 4, 45 | Intern1 | 72h |
| 49 | 9.1.1 | Specs |  |  | 2019-08-14 | 2019-08-15 |  |  | 16h |

| ID | WBS | Task | Type | Duration | Start | Finish | Predecessors | Resources | Work |
| --- | --- | --- | --- | --- | --- | --- | --- | --- | --- |
| 50 | 9.1.2 | **Proof** |  |  | 2019-08-16 | 2019-08-20 | 49 |  | 56h |
| 51 | 9.1.2.1 | NativeInteger_compare |  |  | 2019-08-16 | 2019-08-20 |  |  | 24h |
| 52 | 9.1.2.2 | asn_INTEGER2ulong |  |  | 2019-08-16 | 2019-08-20 |  |  | 24h |
| 53 | 9.1.2.3 | NativeInteger_decode_ber |  |  | 2019-08-16 | 2019-08-16 |  |  | 8h |
| 54 | 9.2 | **Native Integer encoder** |  |  | 2019-08-14 | 2019-08-26 | 42 | Intern2 | 112h |
| 55 | 9.2.1 | Spec |  |  | 2019-08-14 | 2019-08-15 |  |  | 16h |
| 56 | 9.2.2 | **Proof** |  |  | 2019-08-16 | 2019-08-26 | 49 |  | 96h |
| 57 | 9.2.2.1 | Integer_compare |  |  | 2019-08-16 | 2019-08-20 |  |  | 24h |
| 58 | 9.2.2.2 | INTEGER_encode_der |  |  | 2019-08-16 | 2019-08-26 |  |  | 56h |
| 59 | 9.2.2.3 | NativeInteger_encode_der |  |  | 2019-08-16 | 2019-08-19 |  |  | 16h |
| 60 | 9.3 | Roundtrip correctness Integer |  |  | 2019-08-27 | 2019-09-13 | 54, 48 |  | 112h |
| 61 | 10 | Milestone: Native Integer encoder/decoder correctness | milestone | 0d | 2019-09-13 | 2019-09-13 | 47 |  |  |
| 62 | 11 | **Native Real type** |  |  | 2019-09-16 | 2019-11-01 | 41 | Eng1; Eng2; Intern1 | 584h |
| 63 | 11.1 | **Native real decoder** |  |  | 2019-09-16 | 2019-10-03 | 60 | Eng1; Eng2; Eng3; Intern1 | 280h |
| 64 | 11.1.1 | revision of float spec |  |  | 2019-09-16 | 2019-09-19 |  | Eng1; Intern1 | 56h |
| 65 | 11.1.2 | asn_REAL2double |  |  | 2019-09-16 | 2019-10-03 |  |  | 112h |
| 66 | 11.1.3 | NativeReal_decode_ber |  |  | 2019-09-16 | 2019-09-24 |  |  | 56h |
| 67 | 11.1.4 | REAL_compare |  |  | 2019-09-16 | 2019-09-24 |  |  | 56h |
| 68 | 11.2 | **Native real encoder** |  |  | 2019-09-16 | 2019-10-03 | 60 |  | 136h |
| 69 | 11.2.1 | NativeReal_encode_der |  |  | 2019-09-16 | 2019-09-18 |  |  | 24h |
| 70 | 11.2.2 | asn_double2REAL |  |  | 2019-09-16 | 2019-10-03 |  |  | 112h |
| 71 | 11.3 | Roundtrip correctness Real |  |  | 2019-10-04 | 2019-11-01 | 68, 63 |  | 168h |
| 72 | 12 | Milestone: Native Real encoder/decoder correctness |  |  | 2019-11-04 | 2019-11-04 | 62 |  | 8h |
| 73 | 13 | **Octet String type** |  |  | 2019-11-04 | 2020-03-06 | 41 | Eng1; Eng2; Intern1 | 776h |
| 74 | 13.1 | **Octet string decoder** |  |  | 2019-11-04 | 2020-01-24 | 71 |  | 480h |
| 75 | 13.1.1 | OCTET_STRING_decode_ber |  |  | 2019-11-04 | 2020-01-24 |  |  | 480h |

| ID | WBS | Task | Type | Duration | Start | Finish | Predecessors | Resources | Work |
| --- | --- | --- | --- | --- | --- | --- | --- | --- | --- |
| 76 | 13.2 | **Octet string encoder** |  |  | 2019-11-04 | 2019-11-12 | 71 |  | 56h |
| 77 | 13.2.1 | OCTET_STRING_encode_der |  |  | 2019-11-04 | 2019-11-12 |  |  | 56h |
| 78 | 13.3 | Roundtrip correctness Octet string |  |  | 2020-01-27 | 2020-03-06 | 75, 76 |  | 240h |
| 79 | 14 | Milestone: Octet String encoder/decoder correctness | milestone | 0d | 2020-03-06 | 2020-03-06 | 73 |  |  |
| 80 | 15 | **Time types** |  |  | 2019-11-13 | 2020-02-13 | 41 | Eng3; Intern1 | 448h |
| 81 | 15.1 | **Time decoder** |  |  | 2020-01-27 | 2020-02-13 | 74 |  | 280h |
| 82 | 15.1.1 | Spec of time type |  |  | 2020-01-27 | 2020-02-13 |  |  | 112h |
| 83 | 15.1.2 | GeneralizedTime_compare |  |  | 2020-01-27 | 2020-02-13 |  |  | 112h |
| 84 | 15.1.3 | UTCTime_compare |  |  | 2020-01-27 | 2020-02-04 |  |  | 56h |
| 85 | 15.2 | **Time encoder** |  |  | 2019-11-13 | 2019-12-11 | 77 |  | 168h |
| 86 | 15.2.1 | asn_GT2time_frac |  |  | 2019-11-13 | 2019-12-11 |  |  | 168h |
| 87 | 16 | Milestone: Time types encoder/decoder correctness | milestone | 0d | 2020-02-13 | 2020-02-13 | 80 |  |  |
| 88 | 17 | Milestone: Time library for Coq | milestone | 0d | 2020-02-13 | 2020-02-13 | 80 |  |  |
| 89 | 18 | Other simple types |  |  | 2020-01-27 | 2020-01-30 | 77, 75 | Intern1; Intern2 | 56h |
| 90 | 19 | Milestone: All simple types | milestone | 0d | 2020-01-30 | 2020-01-30 | 89 |  |  |
| 91 | 20 | **Choice type** |  |  | 2020-01-30 | 2020-03-19 |  | Eng1; Eng2; Eng3 | 432h |
| 92 | 20.1 | **Choice decoder** |  |  | 2020-01-30 | 2020-02-28 | 89 |  | 216h |
| 93 | 20.1.1 | CHOICE_decode_ber |  |  | 2020-01-30 | 2020-02-28 |  |  | 168h |
| 94 | 20.1.2 | _search4tag |  |  | 2020-01-30 | 2020-02-04 |  |  | 24h |
| 95 | 20.1.3 | other aux functions |  |  | 2020-01-30 | 2020-02-04 |  |  | 24h |
| 96 | 20.2 | **Choice encoder** |  |  | 2020-01-30 | 2020-02-13 | 89 |  | 104h |
| 97 | 20.2.1 | CHOICE_encode_der |  |  | 2020-01-30 | 2020-02-13 |  |  | 80h |
| 98 | 20.2.2 | CHOICE_outmost_tag |  |  | 2020-01-30 | 2020-02-04 |  |  | 24h |
| 99 | 20.3 | Roundtrip correctness Choice |  |  | 2020-02-28 | 2020-03-19 | 97, 92 |  | 112h |
| 100 | 21 | Milestone: Choice encoder/decoder correctness |  |  | 2020-03-19 | 2020-03-20 | 91 |  | 8h |

| ID | WBS | Task | Type | Duration | Start | Finish | Predecessors | Resources | Work |
| --- | --- | --- | --- | --- | --- | --- | --- | --- | --- |
| 101 | 22 | **Sequence type** |  |  | 2020-03-19 | 2020-05-28 | 91 | Eng1; Eng2; Eng3 | 712h |
| 102 | 22.1 | **Sequence decoder** |  |  | 2020-03-19 | 2020-05-28 | 99 |  | 400h |
| 103 | 22.1.1 | SEQUENCE_decode_ber |  |  | 2020-03-19 | 2020-05-28 |  |  | 400h |
| 104 | 22.2 | _t2e_cmp |  |  | 2020-03-19 | 2020-03-20 |  |  | 8h |
| 105 | 22.3 | **Sequence encoder** |  |  | 2020-03-19 | 2020-04-02 | 99 |  | 136h |
| 106 | 22.3.1 | SEQUENCE_encode_der |  |  | 2020-03-19 | 2020-04-02 |  |  | 80h |
| 107 | 22.3.2 | SEQUENCE_OF_ENCODE_der |  |  | 2020-03-19 | 2020-03-30 |  |  | 56h |
| 108 | 22.4 | Roundtrip correctness Sequence |  |  | 2020-04-02 | 2020-05-01 | 106 |  | 168h |
| 109 | 23 | Milestone: Sequence encoder/decoder correctness |  |  | 2020-05-28 | 2020-05-29 | 101 |  | 8h |
| 110 | 24 | **Set type** |  |  | 2020-05-28 | 2020-06-17 | 101 | Eng1; Eng2; Eng3 | 488h |
| 111 | 24.1 | **Set_of decoder** |  |  | 2020-05-28 | 2020-06-17 | 89 |  | 264h |
| 112 | 24.1.1 | SET_OF_decode_ber |  |  | 2020-05-28 | 2020-06-17 |  |  | 112h |
| 113 | 24.1.2 | _SET_is_populated |  |  | 2020-05-28 | 2020-06-01 |  |  | 16h |
| 114 | 24.1.3 | SET_OF_decode_ber |  |  | 2020-05-28 | 2020-06-17 |  |  | 112h |
| 115 | 24.1.4 | _el_addbytes |  |  | 2020-05-28 | 2020-06-01 |  |  | 16h |
| 116 | 24.1.5 | _el_buf_cmp |  |  | 2020-05-28 | 2020-05-29 |  |  | 8h |
| 117 | 24.2 | **Set_of encoder** |  |  | 2020-05-28 | 2020-06-08 | 89 |  | 112h |
| 118 | 24.2.1 | SET_OF_encode_der |  |  | 2020-05-28 | 2020-06-08 |  |  | 56h |
| 119 | 24.2.2 | SET_OF__encode_sorted |  |  | 2020-05-28 | 2020-06-08 |  |  | 56h |
| 120 | 24.3 | Roundtrip correctness of Set type |  |  | 2020-05-28 | 2020-06-17 |  |  | 112h |
| 121 | 25 | Milestone: Set type encoder/decoder correctness | milestone | 0d | 2020-06-17 | 2020-06-17 | 110 |  |  |
| 122 | 26 | Milestone: All constructed types correctness | milestone | 0d | 2020-06-17 | 2020-06-17 | 110 |  |  |
