# ASN1 Verification

Schedule from Planner, 2019-07-15 to 2020-07-14.
Phase: Phase I

## Calendars

- Default: Mon-Fri 08:00-12:00, 13:00-17:00; Sat-Sun off.

## Resources

| Resource |
| --- |
| Eng1 |
| Eng2 |
| Eng3 |
| Intern1 |
| Intern2 |
| CEng |

## Schedule

| ID | WBS | Task | Type | Duration | Start | Finish | Predecessors | Resources | Work |
| --- | --- | --- | --- | --- | --- | --- | --- | --- | --- |
| 1 | 1 | **Formalization of ASN1 specification** |  |  | 2019-07-15 | 2019-08-01 |  | Eng1; Eng2; Eng3; Intern1 [50%]; Intern2 [50%] | 504h |
| 2 | 1.1 | Auxiliary functions specs |  |  | 2019-07-15 | 2019-08-01 |  |  | 112h |
| 3 | 1.2 | ASN1 training |  |  | 2019-07-15 | 2019-07-23 |  |  | 56h |
| 4 | 1.3 | Primitive and constructed types |  |  | 2019-07-15 | 2019-08-01 |  |  | 112h |
| 5 | 1.4 | Main functions specs |  |  | 2019-07-15 | 2019-08-01 |  |  | 112h |
| 6 | 1.5 | Safety properties |  |  | 2019-07-15 | 2019-08-01 |  |  | 112h |
| 7 | 2 | Milestone: X.509 part of ASN1 standrad formalized | milestone | 0d | 2019-08-01 | 2019-08-01 | 1 |  |  |
| 8 | 3 | Refactoring C code |  |  | 2019-07-15 | 2019-08-23 |  | CEng | 240h |
| 9 | 4 | **Primitive types verification** |  |  | 2019-08-26 | 2020-02-25 | 8, 1 |  | 2992h |
| 10 | 4.1 | Important auxiliary functions |  |  | 2019-08-26 | 2019-10-22 |  | Eng1; Eng2; Eng3 | 992h |
| 11 | 4.2 | Deliverable: aux function correctness | milestone | 0d | 2019-10-22 | 2019-10-22 | 10 |  |  |
| 12 | 4.3 | **BOOLEAN type** |  |  | 2019-08-26 | 2019-09-12 |  | Intern1 [50%]; Intern2 [50%] | 112h |
| 13 | 4.3.1 | Boolean decoder/encoder |  |  | 2019-08-26 | 2019-09-03 |  |  | 56h |
| 14 | 4.3.2 | Roundtrip correctness Boolean |  |  | 2019-09-04 | 2019-09-12 | 13 |  | 56h |
| 15 | 4.4 | NULL type |  |  | 2019-09-13 | 2019-09-13 | 12 | Intern1 [50%]; Intern2 [50%] |  |
| 16 | 4.5 | Deliverable: Boolean encoder/decoder correctness | milestone | 0d | 2019-09-12 | 2019-09-12 | 12 |  |  |
| 17 | 4.6 | **Refactoring and revisions** |  |  | 2019-10-22 | 2019-10-31 | 16, 10 | Eng1; Eng2; Eng3 | 96h |
| 18 | 4.6.1 | Formulating high-level properties |  |  | 2019-10-22 | 2019-10-31 |  |  | 56h |
| 19 | 4.6.2 | New complexity estimates |  |  | 2019-10-22 | 2019-10-25 |  |  | 24h |
| 20 | 4.6.3 | Proof automation |  |  | 2019-10-22 | 2019-10-24 |  |  | 16h |
| 21 | 4.7 | Deliverable: Proof automation library | milestone | 0d | 2019-10-31 | 2019-10-31 | 17 |  |  |
| 22 | 4.8 | Deliverable: New planning | milestone | 0d | 2019-10-25 | 2019-10-25 | 19 |  |  |
| 23 | 4.9 | **Primitive type** |  |  | 2019-10-31 | 2019-11-14 | 17 |  | 168h |
| 24 | 4.9.1 | Primitive encoder/decoder |  |  | 2019-10-31 | 2019-11-14 |  | Eng1; Intern2 | 168h |

| ID | WBS | Task | Type | Duration | Start | Finish | Predecessors | Resources | Work |
| --- | --- | --- | --- | --- | --- | --- | --- | --- | --- |
| 25 | 4.10 | **INTEGER types** |  |  | 2019-11-14 | 2019-12-17 | 23 | Eng1; Intern2 [50%] | 248h |
| 26 | 4.10.1 | INTEGER type |  |  | 2019-11-14 | 2019-11-21 |  |  | 40h |
| 27 | 4.10.2 | Native Integer type |  |  | 2019-11-14 | 2019-11-18 | 23 |  | 16h |
| 28 | 4.10.3 | Native Integer encoder/decoder |  |  | 2019-11-14 | 2019-11-27 | 24 |  | 72h |
| 29 | 4.10.4 | Roundtrip correctness Integer |  |  | 2019-11-27 | 2019-12-17 | 28 |  | 112h |
| 30 | 4.10.5 | ENUMERATED type |  |  | 2019-11-18 | 2019-11-19 | 23, 27 |  | 8h |
| 31 | 4.11 | Deliverable: Integer encoder/decoder correctness | milestone | 0d | 2019-11-18 | 2019-11-18 | 27 |  |  |
| 32 | 4.12 | **String types** |  |  | 2019-11-14 | 2020-01-30 | 17 |  | 872h |
| 33 | 4.12.1 | **OCTET STRING type** |  |  | 2019-11-14 | 2020-01-23 | 23 |  | 832h |
| 34 | 4.12.1.1 | Octet string decoder/encoder |  |  | 2019-11-14 | 2020-01-23 |  | Eng2 [50%]; Eng3 [50%]; Intern1 [50%] | 592h |
| 35 | 4.12.1.2 | Roundtrip correctness Octet string |  |  | 2019-11-14 | 2019-12-12 |  | Eng2 [50%]; Eng3 [50%]; Intern1 [50%] | 240h |
| 36 | 4.12.2 | Deliverable: Octet String encoder/decoder correctness | milestone | 0d | 2020-01-23 | 2020-01-23 | 33 |  |  |
| 37 | 4.12.3 | ANY type |  |  | 2020-01-23 | 2020-01-23 | 33 |  |  |
| 38 | 4.12.4 | IA5String type |  |  | 2020-01-23 | 2020-01-23 | 33 |  |  |
| 39 | 4.12.5 | PrintableString type |  |  | 2020-01-23 | 2020-01-23 | 33 |  |  |
| 40 | 4.12.6 | RELATIVE-OID type |  |  | 2019-11-14 | 2019-11-14 | 23 |  |  |
| 41 | 4.12.7 | BIT STRING type |  |  | 2020-01-23 | 2020-01-30 | 33 |  | 40h |
| 42 | 4.12.8 | BMPString type |  |  | 2020-01-23 | 2020-01-23 | 33 |  |  |
| 43 | 4.12.9 | ISO646String type |  |  | 2020-01-23 | 2020-01-23 | 33 |  |  |
| 44 | 4.12.10 | UTF8String |  |  | 2020-01-23 | 2020-01-23 | 33 |  |  |
| 45 | 4.12.11 | UniversalString |  |  | 2020-01-23 | 2020-01-23 | 33 |  |  |
| 46 | 4.13 | Deliverable: All string types encoder/decoder correctness | milestone | 0d | 2020-01-30 | 2020-01-30 | 32 |  |  |
| 47 | 4.14 | **Time types** |  |  | 2019-12-17 | 2020-02-25 | 25, 23 |  | 504h |
| 48 | 4.14.1 | Spec of time type |  |  | 2019-12-17 | 2020-01-15 |  | Eng1 [50%]; Intern2 [50%] | 168h |
| 49 | 4.14.2 | Generalized Time |  |  | 2020-01-23 | 2020-02-25 | 34 | Eng1 [50%]; Intern1 [50%]; Intern2 [50%] | 280h |
| 50 | 4.14.3 | UTC Time |  |  | 2019-12-17 | 2019-12-26 |  |  | 56h |
| 51 | 4.15 | Deliverable: Time types encoder/decoder correctness | milestone | 0d | 2020-02-25 | 2020-02-25 | 47 |  |  |
| 52 | 4.16 | Deliverable: Time library for Coq | milestone | 0d | 2020-02-25 | 2020-02-25 | 47 |  |  |
| 53 | 5 | Milestone: primitive types correctness | milestone | 0d | 2020-02-25 | 2020-02-25 | 9 |  |  |

| ID | WBS | Task | Type | Duration | Start | Finish | Predecessors | Resources | Work |
| --- | --- | --- | --- | --- | --- | --- | --- | --- | --- |
| 54 | 6 | **Constructed types verification** |  |  | 2020-01-30 | 2020-06-23 |  |  | 1440h |
| 55 | 6.1 | **Choice type** |  |  | 2020-01-30 | 2020-03-02 | 32 |  | 360h |
| 56 | 6.1.1 | Choice decoder/encoder |  |  | 2020-01-30 | 2020-02-20 |  | Eng2 [50%]; Eng3 [50%]; Intern1 [50%]; Intern2 [50%] | 248h |
| 57 | 6.1.2 | Roundtrip correctness Choice |  |  | 2020-02-20 | 2020-03-02 | 56 | Eng2 [50%]; Eng3 [50%]; Intern1 [50%]; Intern2 [50%] | 112h |
| 58 | 6.2 | Deliverable: Choice encoder/decoder correctness | milestone | 0d | 2020-03-02 | 2020-03-02 | 55 |  |  |
| 59 | 6.3 | **Sequence type** |  |  | 2020-03-02 | 2020-06-03 | 53, 55 | Eng1; Eng2; Eng3; Intern1 [50%]; Intern2 [50%] | 704h |
| 60 | 6.3.1 | Sequence decoder/encoder |  |  | 2020-03-02 | 2020-06-03 | 57 |  | 536h |
| 61 | 6.3.2 | Roundtrip correctness Sequence |  |  | 2020-03-02 | 2020-03-31 |  |  | 168h |
| 62 | 6.4 | Deliverable: Sequence encoder/decoder correctness | milestone | 0d | 2020-06-03 | 2020-06-03 | 59 |  |  |
| 63 | 6.5 | **Set type** |  |  | 2020-06-03 | 2020-06-23 | 59 |  | 376h |
| 64 | 6.5.1 | Set_of decoder/encoder |  |  | 2020-06-03 | 2020-06-15 |  | Eng1; Eng2; Eng3; Intern1 [50%]; Intern2 [50%] | 264h |
| 65 | 6.5.2 | Roundtrip correctness of Set type |  |  | 2020-06-03 | 2020-06-23 |  |  | 112h |
| 66 | 6.6 | Deliverable: Set type encoder/decoder correctness | milestone | 0d | 2020-06-23 | 2020-06-23 | 63 |  |  |
| 67 | 6.7 | Deliverable: All constructed types correctness | milestone | 0d | 2020-06-23 | 2020-06-23 | 63 |  |  |
| 68 | 7 | Milestone: constructed types correctness | milestone | 0d | 2020-06-23 | 2020-06-23 | 54 |  |  |
| 69 | 8 | Proving high-level properties |  |  | 2020-06-23 | 2020-07-03 | 1, 9, 54 | Eng1; Eng2; Eng3; Intern1 [50%]; Intern2 [50%] | 240h |
| 70 | 9 | Milesotone: highl-level properties proof | milestone | 0d | 2020-07-03 | 2020-07-03 | 69 |  |  |
| 71 | 10 | Report/paper |  |  | 2020-07-03 | 2020-07-14 | 69 | Eng1; Eng2; Eng3; Intern1 [50%]; Intern2 [50%] | 240h |
| 72 | 11 | Milestone: report | milestone | 0d | 2020-07-14 | 2020-07-14 | 71 |  |  |
