# ASN1 Verification

Schedule from Planner, 2019-07-15 to 2020-05-07.
Phase: Phase I

## Calendars

- Default: Mon-Fri 08:00-12:00, 13:00-17:00; Sat-Sun off.

## Resources

| Resource |
| --- |
| Eng1 |
| Eng2 |
| Eng3 |
| Intern1 |
| Intern2 |
| CEng |

## Schedule

| ID | WBS | Task | Type | Duration | Start | Finish | Predecessors | Resources | Work |
| --- | --- | --- | --- | --- | --- | --- | --- | --- | --- |
| 1 | 1 | **Formalization of ASN1 specification** |  |  | 2019-07-15 | 2019-08-23 |  | Eng1; Eng2; Eng3; Intern1 [50%]; Intern2 [50%] | 520h |
| 2 | 1.1 | ASN1 training |  |  | 2019-07-15 | 2019-07-23 |  |  | 56h |
| 3 | 1.2 | Primitive and constructed types |  |  | 2019-07-15 | 2019-08-01 |  |  | 112h |
| 4 | 1.3 | Main functions specs |  |  | 2019-07-15 | 2019-08-23 |  |  | 240h |
| 5 | 1.4 | Safety properties |  |  | 2019-07-15 | 2019-08-01 |  |  | 112h |
| 6 | 2 | Milestone: X.509 part of ASN1 standrad formalized | milestone | 0d | 2019-08-23 | 2019-08-23 | 1 |  |  |
| 7 | 3 | Refactoring C code |  |  | 2019-07-15 | 2019-08-23 |  | CEng | 240h |
| 8 | 4 | **Primitive types verification** |  |  | 2019-08-26 | 2020-01-15 | 7, 1 |  | 3008h |
| 9 | 4.1 | Important auxiliary functions |  |  | 2019-08-26 | 2019-10-22 |  | Eng1; Eng2; Eng3 | 992h |
| 10 | 4.2 | BOOLEAN type |  |  | 2019-08-26 | 2019-10-02 |  | Intern1 [50%] | 112h |
| 11 | 4.3 | NULL type |  |  | 2019-10-03 | 2019-10-03 | 10 | Intern1 [50%] |  |
| 12 | 4.4 | **Refactoring and revisions** |  |  | 2019-10-22 | 2019-10-31 | 9 | Eng1; Eng2; Eng3 | 96h |
| 13 | 4.4.1 | Formulating high-level properties |  |  | 2019-10-22 | 2019-10-31 |  |  | 56h |
| 14 | 4.4.2 | New complexity estimates |  |  | 2019-10-22 | 2019-10-25 |  |  | 24h |
| 15 | 4.4.3 | Proof automation |  |  | 2019-10-22 | 2019-10-24 |  |  | 16h |
| 16 | 4.5 | Primitive type |  |  | 2019-08-26 | 2019-10-22 |  | Intern2 [50%] | 168h |
| 17 | 4.6 | INTEGER types |  |  | 2019-08-26 | 2019-11-25 |  | Intern2 [50%] | 264h |
| 18 | 4.7 | String types |  |  | 2019-10-31 | 2019-12-20 | 12 | Eng1; Eng2; Eng3 | 872h |
| 19 | 4.8 | Time types |  |  | 2019-12-20 | 2020-01-15 | 18 | Eng1; Eng2; Eng3; Intern2 [50%] | 504h |
| 20 | 5 | Milestone: primitive types correctness | milestone | 0d | 2020-01-15 | 2020-01-15 | 8 |  |  |
| 21 | 6 | **Constructed types verification** |  |  | 2020-01-15 | 2020-04-07 | 20 |  | 1600h |
| 22 | 6.1 | Choice type |  |  | 2020-01-15 | 2020-03-16 |  | Eng1; Intern1 [50%] | 520h |
| 23 | 6.2 | Sequence type |  |  | 2020-01-15 | 2020-04-07 | 20 | Eng2; Intern1 [50%] | 704h |
| 24 | 6.3 | Set type |  |  | 2020-01-15 | 2020-02-27 |  | Eng3; Intern2 [50%] | 376h |
| 25 | 7 | Milestone: constructed types correctness | milestone | 0d | 2020-04-07 | 2020-04-07 | 21 |  |  |
| 26 | 8 | High-level properties |  |  | 2020-04-07 | 2020-04-28 | 1, 8, 21 | Eng1; Eng2; Eng3; Intern1 [50%]; Intern2 [50%] | 480h |
| 27 | 9 | Milesotone: highl-level properties proof | milestone | 0d | 2020-04-28 | 2020-04-28 | 26 |  |  |
| 28 | 10 | Report/paper |  |  | 2020-04-28 | 2020-05-07 | 26 | Eng1; Eng2; Eng3; Intern1 [50%]; Intern2 [50%] | 240h |
| 29 | 11 | Milestone: report | milestone | 0d | 2020-05-07 | 2020-05-07 | 28 |  |  |
