# ASN1 Verification

Schedule from Planner, 2019-07-15 to 2020-05-07.
Phase: Phase I

## Calendars

- Default: Mon-Fri 08:00-12:00, 13:00-17:00; Sat-Sun off.

## Resources

| Resource |
| --- |
| Eng1 |
| Eng2 |
| Eng3 |
| Intern1 |
| Intern2 |

## Schedule

| ID | WBS | Task | Type | Duration | Start | Finish | Predecessors | Resources | Work |
| --- | --- | --- | --- | --- | --- | --- | --- | --- | --- |
| 1 | 1 | **Important auxiliary functions** |  |  | 2019-07-15 | 2019-08-23 |  | Eng1; Eng2; Eng3 | 984h |
| 2 | 1.1 | **Ber decoder** |  |  | 2019-07-15 | 2019-08-23 |  |  | 792h |
| 3 | 1.1.1 | **Specs** |  |  | 2019-07-15 | 2019-07-23 |  |  | 304h |
| 4 | 1.1.1.1 | ber_check_tags |  |  | 2019-07-15 | 2019-07-17 |  | Eng1; Eng2; Eng3 | 56h |
| 5 | 1.1.1.2 | ber_fetch_tag |  |  | 2019-07-15 | 2019-07-23 |  |  | 56h |
| 6 | 1.1.1.3 | ber_fetch_length |  |  | 2019-07-15 | 2019-07-23 |  |  | 56h |
| 7 | 1.1.1.4 | ber_tlv_tag_string |  |  | 2019-07-15 | 2019-07-17 |  |  | 24h |
| 8 | 1.1.1.5 | ber_fetch_length |  |  | 2019-07-15 | 2019-07-23 |  |  | 56h |
| 9 | 1.1.1.6 | ber_tlv_tag_serialize |  |  | 2019-07-15 | 2019-07-23 |  |  | 56h |
| 10 | 1.1.2 | **Proofs** |  |  | 2019-07-15 | 2019-08-23 |  |  | 488h |
| 11 | 1.1.2.1 | ber_check_tags |  |  | 2019-07-15 | 2019-08-23 |  |  | 240h |
| 12 | 1.1.2.2 | ber_fetch_tag |  |  | 2019-07-15 | 2019-08-01 |  |  | 112h |
| 13 | 1.1.2.3 | ber_fetch_length |  |  | 2019-07-15 | 2019-07-23 |  |  | 56h |
| 14 | 1.1.2.4 | ber_tlv_tag_string |  |  | 2019-07-15 | 2019-07-17 |  |  | 24h |
| 15 | 1.1.2.5 | ber_fetch_length |  |  | 2019-07-15 | 2019-07-23 |  |  | 56h |
| 16 | 1.2 | **Der encoder** |  |  | 2019-07-15 | 2019-08-01 |  |  | 192h |
| 17 | 1.2.1 | **Specs** |  |  | 2019-07-15 | 2019-07-17 |  |  | 40h |
| 18 | 1.2.1.1 | der_write_tags |  |  | 2019-07-15 | 2019-07-17 |  |  | 24h |
| 19 | 1.2.1.2 | der_write_TL |  |  | 2019-07-15 | 2019-07-15 |  |  | 8h |
| 20 | 1.2.1.3 | der_tlv_length_serialize |  |  | 2019-07-15 | 2019-07-15 |  |  | 8h |
| 21 | 1.2.2 | **Proofs** |  |  | 2019-07-15 | 2019-08-01 |  |  | 152h |
| 22 | 1.2.2.1 | der_write_tags |  |  | 2019-07-15 | 2019-08-01 |  |  | 112h |
| 23 | 1.2.2.2 | der_write_TL |  |  | 2019-07-15 | 2019-07-16 |  |  | 16h |
| 24 | 1.2.2.3 | der_tlv_length_serialize |  |  | 2019-07-15 | 2019-07-17 |  |  | 24h |
| 25 | 2 | Milestone: ber_check_tag correctness | milestone | 0d | 2019-08-23 | 2019-08-23 | 1 |  |  |

| ID | WBS | Task | Type | Duration | Start | Finish | Predecessors | Resources | Work |
| --- | --- | --- | --- | --- | --- | --- | --- | --- | --- |
| 26 | 3 | **BOOLEAN type** |  |  | 2019-07-24 | 2019-08-12 | 3 | Intern1; Intern2 | 128h |
| 27 | 3.1 | **Boolean decoder** |  |  | 2019-07-24 | 2019-08-01 |  | Intern1 [50%] | 64h |
| 28 | 3.1.1 | BOOLEAN_compare |  |  | 2019-07-24 | 2019-07-24 |  |  | 8h |
| 29 | 3.1.2 | BOOLEAN_decode_ber |  |  | 2019-07-24 | 2019-08-01 |  |  | 56h |
| 30 | 3.2 | **Boolean encoder** |  |  | 2019-07-24 | 2019-07-24 |  | Intern2 [50%] | 8h |
| 31 | 3.2.1 | BOOLEAN_encode_der |  |  | 2019-07-24 | 2019-07-24 |  |  | 8h |
| 32 | 3.3 | Roundtrip correctness Boolean |  |  | 2019-08-02 | 2019-08-12 | 30, 27 |  | 56h |
| 33 | 4 | **NULL type** |  |  | 2019-08-13 | 2019-08-13 | 18, 26 |  | 8h |
| 34 | 4.1 | NULL_encode_der |  |  | 2019-08-13 | 2019-08-13 |  |  | 8h |
| 35 | 4.2 | NULL_compare |  |  | 2019-08-13 | 2019-08-13 |  |  |  |
| 36 | 5 | Milestone: Boolean encoder/decoder correctness | milestone | 0d | 2019-08-12 | 2019-08-12 | 3, 26 |  |  |
| 37 | 6 | **Refactoring and revisions** |  |  | 2019-08-13 | 2019-08-21 | 36 | Eng1; Eng2; Eng3 | 184h |
| 38 | 6.1 | Formulating high-level properties |  |  | 2019-08-13 | 2019-08-21 |  |  | 56h |
| 39 | 6.2 | New complexity estimates |  |  | 2019-08-13 | 2019-08-14 |  |  | 16h |
| 40 | 6.3 | Proof automation |  |  | 2019-08-13 | 2019-08-15 | 4 | Eng1; Eng2; Eng3 | 56h |
| 41 | 6.4 | Refactoring C code |  |  | 2019-08-13 | 2019-08-21 | 4 | Eng3 | 56h |
| 42 | 7 | Milestone: Proof automation library | milestone | 0d | 2019-08-21 | 2019-08-21 | 37 |  |  |
| 43 | 8 | Milestone: New planning | milestone | 0d | 2019-08-14 | 2019-08-14 | 39 |  |  |
| 44 | 9 | **Primitive type** |  |  | 2019-07-25 | 2019-08-13 | 3 | Intern1; Intern2 | 168h |
| 45 | 9.1 | **Primitive encoder** |  |  | 2019-07-25 | 2019-08-13 | 30 | Intern1; Intern2 | 112h |
| 46 | 9.1.1 | der_encode_primitive |  |  | 2019-07-25 | 2019-08-02 |  |  | 56h |
| 47 | 9.1.2 | der_write_tag |  |  | 2019-08-05 | 2019-08-13 | 46 |  | 56h |
| 48 | 9.2 | **Primitive decoder** |  |  | 2019-08-02 | 2019-08-12 | 27 | Intern1; Intern2 | 56h |
| 49 | 9.2.1 | ber_decode_primitive |  |  | 2019-08-02 | 2019-08-12 |  |  | 56h |

| ID | WBS | Task | Type | Duration | Start | Finish | Predecessors | Resources | Work |
| --- | --- | --- | --- | --- | --- | --- | --- | --- | --- |
| 50 | 10 | **INTEGER types** |  |  | 2019-08-14 | 2019-09-10 | 44 |  | 304h |
| 51 | 10.1 | INTEGER_encode_der |  |  | 2019-08-14 | 2019-08-22 |  |  | 56h |
| 52 | 10.2 | Integer_compare |  |  | 2019-08-14 | 2019-08-16 |  |  | 24h |
| 53 | 10.3 | **Native Integer type** |  |  | 2019-08-14 | 2019-09-09 | 44 | Eng1; Eng2; Eng3 | 216h |
| 54 | 10.3.1 | **Native Integer decoder** |  |  | 2019-08-14 | 2019-08-20 | 4, 48 | Intern1 | 72h |
| 55 | 10.3.1.1 | Specs |  |  | 2019-08-14 | 2019-08-15 |  |  | 16h |
| 56 | 10.3.1.2 | **Proof** |  |  | 2019-08-16 | 2019-08-20 | 55 |  | 56h |
| 57 | 10.3.1.2.1 | NativeInteger_compare |  |  | 2019-08-16 | 2019-08-20 |  |  | 24h |
| 58 | 10.3.1.2.2 | asn_INTEGER2ulong |  |  | 2019-08-16 | 2019-08-20 |  |  | 24h |
| 59 | 10.3.1.2.3 | NativeInteger_decode_ber |  |  | 2019-08-16 | 2019-08-16 |  |  | 8h |
| 60 | 10.3.2 | **Native Integer encoder** |  |  | 2019-08-14 | 2019-08-19 | 45 | Intern2 | 32h |
| 61 | 10.3.2.1 | Spec |  |  | 2019-08-14 | 2019-08-15 |  |  | 16h |
| 62 | 10.3.2.2 | **Proof** |  |  | 2019-08-16 | 2019-08-19 | 55 |  | 16h |
| 63 | 10.3.2.2.1 | NativeInteger_encode_der |  |  | 2019-08-16 | 2019-08-19 |  |  | 16h |
| 64 | 10.3.3 | Roundtrip correctness Integer |  |  | 2019-08-21 | 2019-09-09 | 60, 54 |  | 112h |
| 65 | 10.4 | ENUMERATED type |  |  | 2019-09-10 | 2019-09-10 | 44, 53 |  | 8h |
| 66 | 11 | Milestone: Integer encoder/decoder correctness | milestone | 0d | 2019-09-09 | 2019-09-09 | 53 |  |  |
| 67 | 12 | **String types** |  |  | 2019-08-14 | 2019-12-20 |  |  | 872h |
| 68 | 12.1 | **OCTET STRING type** |  |  | 2019-08-14 | 2019-12-17 | 44 | Eng1; Eng2; Intern1 | 832h |
| 69 | 12.1.1 | **Octet string decoder** |  |  | 2019-08-14 | 2019-11-05 |  |  | 536h |
| 70 | 12.1.1.1 | OCTET_STRING_decode_ber |  |  | 2019-08-14 | 2019-11-05 |  |  | 480h |
| 71 | 12.1.1.2 | OCTET_STRING_compare |  |  | 2019-08-14 | 2019-08-22 |  |  | 56h |
| 72 | 12.1.2 | **Octet string encoder** |  |  | 2019-08-14 | 2019-08-22 |  |  | 56h |
| 73 | 12.1.2.1 | OCTET_STRING_encode_der |  |  | 2019-08-14 | 2019-08-22 |  |  | 56h |
| 74 | 12.1.3 | Roundtrip correctness Octet string |  |  | 2019-11-06 | 2019-12-17 | 70, 72 |  | 240h |
| 75 | 12.2 | Milestone: Octet String encoder/decoder correctness | milestone | 0d | 2019-12-17 | 2019-12-17 | 68 |  |  |
| 76 | 12.3 | ANY type |  |  | 2019-12-18 | 2019-12-18 | 68 |  |  |
| 77 | 12.4 | IA5String type |  |  | 2019-12-18 | 2019-12-18 | 68 |  |  |
| 78 | 12.5 | PrintableString type |  |  | 2019-12-18 | 2019-12-18 | 68 |  |  |
| 79 | 12.6 | RELATIVE-OID type |  |  | 2019-08-23 | 2019-08-23 | 44, 71 |  |  |

| ID | WBS | Task | Type | Duration | Start | Finish | Predecessors | Resources | Work |
| --- | --- | --- | --- | --- | --- | --- | --- | --- | --- |
| 80 | 12.7 | **BIT STRING type** |  |  | 2019-12-18 | 2019-12-20 | 68 |  | 40h |
| 81 | 12.7.1 | BIT_STRING_compare |  |  | 2019-12-18 | 2019-12-19 |  |  | 16h |
| 82 | 12.7.2 | BIT_STRING__compactify |  |  | 2019-12-18 | 2019-12-20 |  |  | 24h |
| 83 | 12.8 | BMPString type |  |  | 2019-12-18 | 2019-12-18 | 68 |  |  |
| 84 | 12.9 | ISO646String type |  |  | 2019-12-18 | 2019-12-18 | 68 |  |  |
| 85 | 12.10 | UTF8String |  |  | 2019-12-18 | 2019-12-18 | 68 |  |  |
| 86 | 12.11 | UniversalString |  |  | 2019-12-18 | 2019-12-18 | 68 |  |  |
| 87 | 13 | Milestone: All string types encoder/decoder correctness | milestone | 0d | 2019-12-20 | 2019-12-20 | 67 |  |  |
| 88 | 14 | **Time types** |  |  | 2019-08-14 | 2019-12-04 | 44 | Eng3; Intern1 | 448h |
| 89 | 14.1 | Spec of time type |  |  | 2019-08-14 | 2019-09-02 |  |  | 112h |
| 90 | 14.2 | **Generalized Time** |  |  | 2019-11-06 | 2019-12-04 | 69 |  | 280h |
| 91 | 14.2.1 | GeneralizedTime_compare |  |  | 2019-11-06 | 2019-11-25 |  |  | 112h |
| 92 | 14.2.2 | asn_GT2time_frac |  |  | 2019-11-06 | 2019-12-04 |  |  | 168h |
| 93 | 14.3 | **UTC Time** |  |  | 2019-08-14 | 2019-08-22 |  |  | 56h |
| 94 | 14.3.1 | UTCTime_compare |  |  | 2019-08-14 | 2019-08-22 |  |  | 56h |
| 95 | 15 | Milestone: Time types encoder/decoder correctness | milestone | 0d | 2019-12-04 | 2019-12-04 | 88 |  |  |
| 96 | 16 | Milestone: Time library for Coq | milestone | 0d | 2019-12-04 | 2019-12-04 | 88 |  |  |
| 97 | 17 | **Choice type** |  |  | 2019-12-23 | 2020-02-07 | 67 | Eng1; Eng2; Eng3 | 432h |
| 98 | 17.1 | **Choice decoder** |  |  | 2019-12-23 | 2020-01-20 |  |  | 216h |
| 99 | 17.1.1 | CHOICE_decode_ber |  |  | 2019-12-23 | 2020-01-20 |  |  | 168h |
| 100 | 17.1.2 | _search4tag |  |  | 2019-12-23 | 2019-12-25 |  |  | 24h |
| 101 | 17.1.3 | other aux functions |  |  | 2019-12-23 | 2019-12-25 |  |  | 24h |
| 102 | 17.2 | **Choice encoder** |  |  | 2019-12-23 | 2020-01-03 |  |  | 104h |
| 103 | 17.2.1 | CHOICE_encode_der |  |  | 2019-12-23 | 2020-01-03 |  |  | 80h |
| 104 | 17.2.2 | CHOICE_outmost_tag |  |  | 2019-12-23 | 2019-12-25 |  |  | 24h |
| 105 | 17.3 | Roundtrip correctness Choice |  |  | 2020-01-21 | 2020-02-07 | 103, 98 |  | 112h |
| 106 | 18 | Milestone: Choice encoder/decoder correctness |  |  | 2020-02-10 | 2020-02-10 | 97 |  | 8h |

| ID | WBS | Task | Type | Duration | Start | Finish | Predecessors | Resources | Work |
| --- | --- | --- | --- | --- | --- | --- | --- | --- | --- |
| 107 | 19 | **Sequence type** |  |  | 2020-02-10 | 2020-04-17 | 97 | Eng1; Eng2; Eng3 | 712h |
| 108 | 19.1 | asn_SEQUENCE_OF |  |  | 2020-02-10 | 2020-02-10 |  |  |  |
| 109 | 19.2 | **Sequence decoder** |  |  | 2020-02-10 | 2020-04-17 | 105 |  | 400h |
| 110 | 19.2.1 | SEQUENCE_decode_ber |  |  | 2020-02-10 | 2020-04-17 |  |  | 400h |
| 111 | 19.3 | _t2e_cmp |  |  | 2020-02-10 | 2020-02-10 |  |  | 8h |
| 112 | 19.4 | **Sequence encoder** |  |  | 2020-02-10 | 2020-02-21 | 105 |  | 136h |
| 113 | 19.4.1 | SEQUENCE_encode_der |  |  | 2020-02-10 | 2020-02-21 |  |  | 80h |
| 114 | 19.4.2 | SEQUENCE_OF_ENCODE_der |  |  | 2020-02-10 | 2020-02-18 |  |  | 56h |
| 115 | 19.5 | Roundtrip correctness Sequence |  |  | 2020-02-24 | 2020-03-23 | 113 |  | 168h |
| 116 | 20 | Milestone: Sequence encoder/decoder correctness |  |  | 2020-04-20 | 2020-04-20 | 107 |  | 8h |
| 117 | 21 | **Set type** |  |  | 2020-04-20 | 2020-05-07 | 107 | Eng1; Eng2; Eng3 | 504h |
| 118 | 21.1 | asn_SET_OF |  |  | 2020-04-20 | 2020-04-21 |  |  | 16h |
| 119 | 21.2 | **Set_of decoder** |  |  | 2020-04-20 | 2020-05-07 |  |  | 264h |
| 120 | 21.2.1 | SET_OF_decode_ber |  |  | 2020-04-20 | 2020-05-07 |  |  | 112h |
| 121 | 21.2.2 | _SET_is_populated |  |  | 2020-04-20 | 2020-04-21 |  |  | 16h |
| 122 | 21.2.3 | SET_OF_decode_ber |  |  | 2020-04-20 | 2020-05-07 |  |  | 112h |
| 123 | 21.2.4 | _el_addbytes |  |  | 2020-04-20 | 2020-04-21 |  |  | 16h |
| 124 | 21.2.5 | _el_buf_cmp |  |  | 2020-04-20 | 2020-04-20 |  |  | 8h |
| 125 | 21.3 | **Set_of encoder** |  |  | 2020-04-20 | 2020-04-28 |  |  | 112h |
| 126 | 21.3.1 | SET_OF_encode_der |  |  | 2020-04-20 | 2020-04-28 |  |  | 56h |
| 127 | 21.3.2 | SET_OF__encode_sorted |  |  | 2020-04-20 | 2020-04-28 |  |  | 56h |
| 128 | 21.4 | Roundtrip correctness of Set type |  |  | 2020-04-20 | 2020-05-07 |  |  | 112h |
| 129 | 22 | Milestone: Set type encoder/decoder correctness | milestone | 0d | 2020-05-07 | 2020-05-07 | 117 |  |  |
| 130 | 23 | Milestone: All constructed types correctness | milestone | 0d | 2020-05-07 | 2020-05-07 | 117 |  |  |
