# ASN1 Verification

Schedule from Planner, 2019-07-15 to 2020-08-19.
Phase: Phase I

## Calendars

- Default: Mon-Fri 08:00-12:00, 13:00-17:00; Sat-Sun off.

## Resources

| Resource |
| --- |
| Eng1 |
| Eng2 |
| Eng3 |
| Intern1 |
| Intern2 |
| CEng |

## Schedule

| ID | WBS | Task | Type | Duration | Start | Finish | Predecessors | Resources | Work |
| --- | --- | --- | --- | --- | --- | --- | --- | --- | --- |
| 1 | 1 | **Formalization of ASN1 specification** |  |  | 2019-07-15 | 2019-08-01 |  | Eng1; Eng2; Eng3; Intern1 [50%]; Intern2 [50%] | 504h |
| 2 | 1.1 | ASN1 training |  |  | 2019-07-15 | 2019-07-23 |  |  | 56h |
| 3 | 1.2 | Primitive and constructed types |  |  | 2019-07-15 | 2019-08-01 |  |  | 112h |
| 4 | 1.3 | Main functions specs |  |  | 2019-07-15 | 2019-08-01 |  |  | 112h |
| 5 | 1.4 | Safety properties |  |  | 2019-07-15 | 2019-08-01 |  |  | 112h |
| 6 | 1.5 | Auxiliary functions specs |  |  | 2019-07-15 | 2019-08-01 |  |  | 112h |
| 7 | 2 | Milestone: part of ASN1 standrad formalized | milestone | 0d | 2019-08-01 | 2019-08-01 | 1 |  |  |
| 8 | 3 | Refactoring C code |  |  | 2019-07-15 | 2019-08-23 |  | CEng | 240h |
| 9 | 4 | **Primitive types verification** |  |  | 2019-08-26 | 2020-03-12 | 8, 1 |  | 3040h |
| 10 | 4.1 | **Important auxiliary functions** |  |  | 2019-08-26 | 2019-10-04 |  | Eng1; Eng2; Eng3 | 984h |
| 11 | 4.1.1 | **Ber decoder aux functions** |  |  | 2019-08-26 | 2019-10-04 |  |  | 792h |
| 12 | 4.1.1.1 | **Specs** |  |  | 2019-08-26 | 2019-09-03 |  |  | 304h |
| 13 | 4.1.1.1.1 | ber_check_tags |  |  | 2019-08-26 | 2019-09-03 |  |  | 56h |
| 14 | 4.1.1.1.2 | ber_fetch_tag |  |  | 2019-08-26 | 2019-09-03 |  |  | 56h |
| 15 | 4.1.1.1.3 | ber_fetch_length |  |  | 2019-08-26 | 2019-09-03 |  |  | 56h |
| 16 | 4.1.1.1.4 | ber_tlv_tag_string |  |  | 2019-08-26 | 2019-08-28 |  |  | 24h |
| 17 | 4.1.1.1.5 | ber_fetch_length |  |  | 2019-08-26 | 2019-09-03 |  |  | 56h |
| 18 | 4.1.1.1.6 | ber_tlv_tag_serialize |  |  | 2019-08-26 | 2019-09-03 |  |  | 56h |
| 19 | 4.1.1.2 | **Proofs** |  |  | 2019-08-26 | 2019-10-04 |  |  | 488h |
| 20 | 4.1.1.2.1 | ber_check_tags |  |  | 2019-08-26 | 2019-10-04 |  |  | 240h |
| 21 | 4.1.1.2.2 | ber_fetch_tag |  |  | 2019-08-26 | 2019-09-12 |  |  | 112h |
| 22 | 4.1.1.2.3 | ber_fetch_length |  |  | 2019-08-26 | 2019-09-03 |  |  | 56h |
| 23 | 4.1.1.2.4 | ber_tlv_tag_string |  |  | 2019-08-26 | 2019-08-28 |  |  | 24h |
| 24 | 4.1.1.2.5 | ber_fetch_length |  |  | 2019-08-26 | 2019-09-03 |  |  | 56h |

| ID | WBS | Task | Type | Duration | Start | Finish | Predecessors | Resources | Work |
| --- | --- | --- | --- | --- | --- | --- | --- | --- | --- |
| 25 | 4.1.2 | **Der encoder aux functions** |  |  | 2019-08-26 | 2019-09-12 |  |  | 192h |
| 26 | 4.1.2.1 | **Specs** |  |  | 2019-08-26 | 2019-08-28 |  |  | 40h |
| 27 | 4.1.2.1.1 | der_write_tags |  |  | 2019-08-26 | 2019-08-28 |  |  | 24h |
| 28 | 4.1.2.1.2 | der_write_TL |  |  | 2019-08-26 | 2019-08-26 |  |  | 8h |
| 29 | 4.1.2.1.3 | der_tlv_length_serialize |  |  | 2019-08-26 | 2019-08-26 |  |  | 8h |
| 30 | 4.1.2.2 | **Proofs** |  |  | 2019-08-26 | 2019-09-12 |  |  | 152h |
| 31 | 4.1.2.2.1 | der_write_tags |  |  | 2019-08-26 | 2019-09-12 |  |  | 112h |
| 32 | 4.1.2.2.2 | der_write_TL |  |  | 2019-08-26 | 2019-08-27 |  |  | 16h |
| 33 | 4.1.2.2.3 | der_tlv_length_serialize |  |  | 2019-08-26 | 2019-08-28 |  |  | 24h |
| 34 | 4.2 | Milestone: ber_check_tag correctness | milestone | 0d | 2019-10-04 | 2019-10-04 | 10 |  |  |
| 35 | 4.3 | **BOOLEAN type** |  |  | 2019-09-04 | 2019-09-23 | 12 | Intern1 [50%]; Intern2 [50%] | 128h |
| 36 | 4.3.1 | **Boolean decoder** |  |  | 2019-09-04 | 2019-09-12 |  |  | 64h |
| 37 | 4.3.1.1 | BOOLEAN_compare |  |  | 2019-09-04 | 2019-09-04 |  |  | 8h |
| 38 | 4.3.1.2 | BOOLEAN_decode_ber |  |  | 2019-09-04 | 2019-09-12 |  |  | 56h |
| 39 | 4.3.2 | **Boolean encoder** |  |  | 2019-09-04 | 2019-09-04 |  |  | 8h |
| 40 | 4.3.2.1 | BOOLEAN_encode_der |  |  | 2019-09-04 | 2019-09-04 |  |  | 8h |
| 41 | 4.3.3 | Roundtrip correctness Boolean |  |  | 2019-09-13 | 2019-09-23 | 39, 36 |  | 56h |
| 42 | 4.4 | **NULL type** |  |  | 2019-09-24 | 2019-09-24 | 27, 35 | Intern1 [50%]; Intern2 [50%] | 8h |
| 43 | 4.4.1 | NULL_encode_der |  |  | 2019-09-24 | 2019-09-24 |  |  | 8h |
| 44 | 4.4.2 | NULL_compare |  |  | 2019-09-24 | 2019-09-24 |  |  |  |
| 45 | 4.5 | Milestone: Boolean encoder/decoder correctness | milestone | 0d | 2019-09-23 | 2019-09-23 | 12, 35 |  |  |
| 46 | 4.6 | **Refactoring and revisions** |  |  | 2019-10-07 | 2019-10-15 | 10, 45 | Eng1; Eng2; Eng3; Intern1 [50%]; Intern2 [50%] | 128h |
| 47 | 4.6.1 | Formulating high-level properties |  |  | 2019-10-07 | 2019-10-15 |  |  | 56h |
| 48 | 4.6.2 | New complexity estimates |  |  | 2019-10-07 | 2019-10-08 |  |  | 16h |
| 49 | 4.6.3 | Proof automation |  |  | 2019-10-07 | 2019-10-15 | 13 |  | 56h |
| 50 | 4.7 | Milestone: Proof automation library | milestone | 0d | 2019-10-15 | 2019-10-15 | 46 |  |  |
| 51 | 4.8 | Milestone: New planning | milestone | 0d | 2019-10-08 | 2019-10-08 | 48 |  |  |

| ID | WBS | Task | Type | Duration | Start | Finish | Predecessors | Resources | Work |
| --- | --- | --- | --- | --- | --- | --- | --- | --- | --- |
| 52 | 4.9 | **Primitive type** |  |  | 2019-10-16 | 2019-11-04 | 46, 12 | Eng1; Eng2; Eng3; Intern1 [50%]; Intern2 [50%] | 168h |
| 53 | 4.9.1 | **Primitive encoder** |  |  | 2019-10-16 | 2019-11-04 | 39 |  | 112h |
| 54 | 4.9.1.1 | der_encode_primitive |  |  | 2019-10-16 | 2019-10-24 |  |  | 56h |
| 55 | 4.9.1.2 | der_write_tag |  |  | 2019-10-25 | 2019-11-04 | 54 |  | 56h |
| 56 | 4.9.2 | **Primitive decoder** |  |  | 2019-10-16 | 2019-10-24 | 36 |  | 56h |
| 57 | 4.9.2.1 | ber_decode_primitive |  |  | 2019-10-16 | 2019-10-24 |  |  | 56h |
| 58 | 4.10 | **INTEGER types** |  |  | 2019-11-05 | 2019-12-02 | 52 | Eng1; Intern1 [50%]; Intern2 [50%] | 304h |
| 59 | 4.10.1 | INTEGER_encode_der |  |  | 2019-11-05 | 2019-11-13 |  |  | 56h |
| 60 | 4.10.2 | Integer_compare |  |  | 2019-11-05 | 2019-11-07 |  |  | 24h |
| 61 | 4.10.3 | **Native Integer type** |  |  | 2019-11-05 | 2019-11-29 | 52 |  | 216h |
| 62 | 4.10.3.1 | **Native Integer decoder** |  |  | 2019-11-05 | 2019-11-11 | 13, 56 |  | 72h |
| 63 | 4.10.3.1.1 | Specs |  |  | 2019-11-05 | 2019-11-06 |  |  | 16h |
| 64 | 4.10.3.1.2 | **Proof** |  |  | 2019-11-07 | 2019-11-11 | 63 |  | 56h |
| 65 | 4.10.3.1.2.1 | NativeInteger_compare |  |  | 2019-11-07 | 2019-11-11 |  |  | 24h |
| 66 | 4.10.3.1.2.2 | asn_INTEGER2ulong |  |  | 2019-11-07 | 2019-11-11 |  |  | 24h |
| 67 | 4.10.3.1.2.3 | NativeInteger_decode_ber |  |  | 2019-11-07 | 2019-11-07 |  |  | 8h |
| 68 | 4.10.3.2 | **Native Integer encoder** |  |  | 2019-11-05 | 2019-11-08 | 53 |  | 32h |
| 69 | 4.10.3.2.1 | Spec |  |  | 2019-11-05 | 2019-11-06 |  |  | 16h |
| 70 | 4.10.3.2.2 | **Proof** |  |  | 2019-11-07 | 2019-11-08 | 63 |  | 16h |
| 71 | 4.10.3.2.2.1 | NativeInteger_encode_der |  |  | 2019-11-07 | 2019-11-08 |  |  | 16h |
| 72 | 4.10.3.3 | Roundtrip correctness Integer |  |  | 2019-11-12 | 2019-11-29 | 68, 62 |  | 112h |
| 73 | 4.10.4 | ENUMERATED type |  |  | 2019-12-02 | 2019-12-02 | 52, 61 |  | 8h |
| 74 | 4.11 | Milestone: Integer encoder/decoder correctness | milestone | 0d | 2019-11-29 | 2019-11-29 | 61 |  |  |
| 75 | 4.12 | **String types** |  |  | 2019-11-05 | 2020-03-12 | 46 | Eng2; Eng3; Intern1 [50%] | 872h |
| 76 | 4.12.1 | **OCTET STRING type** |  |  | 2019-11-05 | 2020-03-09 | 52 |  | 832h |
| 77 | 4.12.1.1 | **Octet string decoder** |  |  | 2019-11-05 | 2020-01-27 |  |  | 536h |
| 78 | 4.12.1.1.1 | OCTET_STRING_decode_ber |  |  | 2019-11-05 | 2020-01-27 |  |  | 480h |
| 79 | 4.12.1.1.2 | OCTET_STRING_compare |  |  | 2019-11-05 | 2019-11-13 |  |  | 56h |

| ID | WBS | Task | Type | Duration | Start | Finish | Predecessors | Resources | Work |
| --- | --- | --- | --- | --- | --- | --- | --- | --- | --- |
| 80 | 4.12.1.2 | **Octet string encoder** |  |  | 2019-11-05 | 2019-11-13 |  |  | 56h |
| 81 | 4.12.1.2.1 | OCTET_STRING_encode_der |  |  | 2019-11-05 | 2019-11-13 |  |  | 56h |
| 82 | 4.12.1.3 | Roundtrip correctness Octet string |  |  | 2020-01-28 | 2020-03-09 | 78, 80 |  | 240h |
| 83 | 4.12.2 | Milestone: Octet String encoder/decoder correctness | milestone | 0d | 2020-03-09 | 2020-03-09 | 76 |  |  |
| 84 | 4.12.3 | ANY type |  |  | 2020-03-10 | 2020-03-10 | 76 |  |  |
| 85 | 4.12.4 | IA5String type |  |  | 2020-03-10 | 2020-03-10 | 76 |  |  |
| 86 | 4.12.5 | PrintableString type |  |  | 2020-03-10 | 2020-03-10 | 76 |  |  |
| 87 | 4.12.6 | RELATIVE-OID type |  |  | 2019-11-14 | 2019-11-14 | 52, 79 |  |  |
| 88 | 4.12.7 | **BIT STRING type** |  |  | 2020-03-10 | 2020-03-12 | 76 |  | 40h |
| 89 | 4.12.7.1 | BIT_STRING_compare |  |  | 2020-03-10 | 2020-03-11 |  |  | 16h |
| 90 | 4.12.7.2 | BIT_STRING__compactify |  |  | 2020-03-10 | 2020-03-12 |  |  | 24h |
| 91 | 4.12.8 | BMPString type |  |  | 2020-03-10 | 2020-03-10 | 76 |  |  |
| 92 | 4.12.9 | ISO646String type |  |  | 2020-03-10 | 2020-03-10 | 76 |  |  |
| 93 | 4.12.10 | UTF8String |  |  | 2020-03-10 | 2020-03-10 | 76 |  |  |
| 94 | 4.12.11 | UniversalString |  |  | 2020-03-10 | 2020-03-10 | 76 |  |  |
| 95 | 4.13 | Milestone: All string types encoder/decoder correctness | milestone | 0d | 2020-03-12 | 2020-03-12 | 75 |  |  |
| 96 | 4.14 | **Time types** |  |  | 2019-12-03 | 2020-02-25 | 58, 52 | Eng1; Intern1 [50%]; Intern2 [50%] | 448h |
| 97 | 4.14.1 | Spec of time type |  |  | 2019-12-03 | 2019-12-20 |  |  | 112h |
| 98 | 4.14.2 | **Generalized Time** |  |  | 2020-01-28 | 2020-02-25 | 77 |  | 280h |
| 99 | 4.14.2.1 | GeneralizedTime_compare |  |  | 2020-01-28 | 2020-02-14 |  |  | 112h |
| 100 | 4.14.2.2 | asn_GT2time_frac |  |  | 2020-01-28 | 2020-02-25 |  |  | 168h |
| 101 | 4.14.3 | **UTC Time** |  |  | 2019-12-03 | 2019-12-11 |  |  | 56h |
| 102 | 4.14.3.1 | UTCTime_compare |  |  | 2019-12-03 | 2019-12-11 |  |  | 56h |
| 103 | 4.15 | Milestone: Time types encoder/decoder correctness | milestone | 0d | 2020-02-25 | 2020-02-25 | 96 |  |  |
| 104 | 4.16 | Milestone: Time library for Coq | milestone | 0d | 2020-02-25 | 2020-02-25 | 96 |  |  |
| 105 | 5 | Milestone: primitive types correctness | milestone | 0d | 2020-03-12 | 2020-03-12 | 9 |  |  |

| ID | WBS | Task | Type | Duration | Start | Finish | Predecessors | Resources | Work |
| --- | --- | --- | --- | --- | --- | --- | --- | --- | --- |
| 106 | 6 | **Constructed types verification** |  |  | 2020-03-13 | 2020-07-29 |  |  | 1648h |
| 107 | 6.1 | **Choice type** |  |  | 2020-03-13 | 2020-04-30 | 75 | Eng1; Eng2; Eng3; Intern1 [50%]; Intern2 [50%] | 432h |
| 108 | 6.1.1 | **Choice decoder** |  |  | 2020-03-13 | 2020-04-10 |  |  | 216h |
| 109 | 6.1.1.1 | CHOICE_decode_ber |  |  | 2020-03-13 | 2020-04-10 |  |  | 168h |
| 110 | 6.1.1.2 | _search4tag |  |  | 2020-03-13 | 2020-03-17 |  |  | 24h |
| 111 | 6.1.1.3 | other aux functions |  |  | 2020-03-13 | 2020-03-17 |  |  | 24h |
| 112 | 6.1.2 | **Choice encoder** |  |  | 2020-03-13 | 2020-03-26 |  |  | 104h |
| 113 | 6.1.2.1 | CHOICE_encode_der |  |  | 2020-03-13 | 2020-03-26 |  |  | 80h |
| 114 | 6.1.2.2 | CHOICE_outmost_tag |  |  | 2020-03-13 | 2020-03-17 |  |  | 24h |
| 115 | 6.1.3 | Roundtrip correctness Choice |  |  | 2020-04-13 | 2020-04-30 | 113, 108 |  | 112h |
| 116 | 6.2 | Milestone: Choice encoder/decoder correctness | milestone | 0d | 2020-04-30 | 2020-04-30 | 107 |  |  |
| 117 | 6.3 | **Sequence type** |  |  | 2020-05-01 | 2020-07-09 | 107 | Eng1; Eng2; Eng3; Intern1 [50%]; Intern2 [50%] | 712h |
| 118 | 6.3.1 | asn_SEQUENCE_OF |  |  | 2020-05-01 | 2020-05-01 |  |  |  |
| 119 | 6.3.2 | **Sequence decoder** |  |  | 2020-05-01 | 2020-07-09 | 115 |  | 400h |
| 120 | 6.3.2.1 | SEQUENCE_decode_ber |  |  | 2020-05-01 | 2020-07-09 |  |  | 400h |
| 121 | 6.3.3 | _t2e_cmp |  |  | 2020-05-01 | 2020-05-01 |  |  | 8h |
| 122 | 6.3.4 | **Sequence encoder** |  |  | 2020-05-01 | 2020-05-14 | 115 |  | 136h |
| 123 | 6.3.4.1 | SEQUENCE_encode_der |  |  | 2020-05-01 | 2020-05-14 |  |  | 80h |
| 124 | 6.3.4.2 | SEQUENCE_OF_ENCODE_der |  |  | 2020-05-01 | 2020-05-11 |  |  | 56h |
| 125 | 6.3.5 | Roundtrip correctness Sequence |  |  | 2020-05-15 | 2020-06-12 | 123 |  | 168h |
| 126 | 6.4 | Milestone: Sequence encoder/decoder correctness | milestone | 0d | 2020-07-09 | 2020-07-09 | 117 |  |  |
| 127 | 6.5 | **Set type** |  |  | 2020-07-10 | 2020-07-29 | 117 | Eng1; Eng2; Eng3; Intern1 [50%]; Intern2 [50%] | 504h |
| 128 | 6.5.1 | asn_SET_OF |  |  | 2020-07-10 | 2020-07-13 |  |  | 16h |
| 129 | 6.5.2 | **Set_of decoder** |  |  | 2020-07-10 | 2020-07-29 |  |  | 264h |
| 130 | 6.5.2.1 | SET_OF_decode_ber |  |  | 2020-07-10 | 2020-07-29 |  |  | 112h |
| 131 | 6.5.2.2 | _SET_is_populated |  |  | 2020-07-10 | 2020-07-13 |  |  | 16h |
| 132 | 6.5.2.3 | SET_OF_decode_ber |  |  | 2020-07-10 | 2020-07-29 |  |  | 112h |
| 133 | 6.5.2.4 | _el_addbytes |  |  | 2020-07-10 | 2020-07-13 |  |  | 16h |
| 134 | 6.5.2.5 | _el_buf_cmp |  |  | 2020-07-10 | 2020-07-10 |  |  | 8h |

| ID | WBS | Task | Type | Duration | Start | Finish | Predecessors | Resources | Work |
| --- | --- | --- | --- | --- | --- | --- | --- | --- | --- |
| 135 | 6.5.3 | **Set_of encoder** |  |  | 2020-07-10 | 2020-07-20 |  |  | 112h |
| 136 | 6.5.3.1 | SET_OF_encode_der |  |  | 2020-07-10 | 2020-07-20 |  |  | 56h |
| 137 | 6.5.3.2 | SET_OF__encode_sorted |  |  | 2020-07-10 | 2020-07-20 |  |  | 56h |
| 138 | 6.5.4 | Roundtrip correctness of Set type |  |  | 2020-07-10 | 2020-07-29 |  |  | 112h |
| 139 | 6.6 | Milestone: Set type encoder/decoder correctness | milestone | 0d | 2020-07-29 | 2020-07-29 | 127 |  |  |
| 140 | 6.7 | Milestone: All constructed types correctness | milestone | 0d | 2020-07-29 | 2020-07-29 | 127 |  |  |
| 141 | 7 | Milestone: constructed types correctness | milestone | 0d | 2020-07-29 | 2020-07-29 | 106 |  |  |
| 142 | 8 | Proving high-level properties |  |  | 2020-07-30 | 2020-08-10 | 1, 9, 106 | Eng1; Eng2; Eng3; Intern1 [50%]; Intern2 [50%] | 240h |
| 143 | 9 | Milesotone: highl-level properties proof | milestone | 0d | 2020-08-10 | 2020-08-10 | 142 |  |  |
| 144 | 10 | Report/paper |  |  | 2020-08-10 | 2020-08-19 | 142 | Eng1; Eng2; Eng3; Intern1 [50%]; Intern2 [50%] | 240h |
| 145 | 11 | Milestone: report | milestone | 0d | 2020-08-19 | 2020-08-19 | 144 |  |  |
